# 福莱特自研MES项目

Schedule from a web Gantt chart, 2025-11-18 to 2027-04-30.
Saturdays and Sundays are off

## Schedule

| ID | WBS | Task | Type | Duration | Start | Finish | Complete | Status |
| --- | --- | --- | --- | --- | --- | --- | --- | --- |
| 2 | 1 | 项目启动会 |  | 1d | 2025-11-18 | 2025-11-18 | 100% | done |
| 3 | 2 | **调研** |  | 14d | 2025-11-18 | 2025-12-05 | 100% | done |
| 4 | 2.1 | 计划业务调研 |  | 1d | 2025-11-18 | 2025-11-18 | 100% | done |
| 5 | 2.2 | 原料工段调研 |  | 1d | 2025-11-19 | 2025-11-19 | 100% | done |
| 6 | 2.3 | 熔化工段调研 |  | 1d | 2025-11-19 | 2025-11-19 | 100% | done |
| 7 | 2.4 | 压延工段调研 |  | 1d | 2025-11-19 | 2025-11-19 | 100% | done |
| 8 | 2.5 | 收片工段调研 |  | 1d | 2025-11-20 | 2025-11-20 | 100% | done |
| 9 | 2.6 | 原片品管调研 |  | 1d | 2025-11-20 | 2025-11-20 | 100% | done |
| 10 | 2.7 | 仓库业务调研 |  | 1d | 2025-11-21 | 2025-11-21 | 100% | done |
| 11 | 2.8 | 加工流程业务调研 |  | 2d | 2025-11-25 | 2025-11-26 | 100% | done |
| 12 | 2.9 | 加工品质调研 |  | 1d | 2025-11-26 | 2025-11-26 | 100% | done |
| 13 | 2.10 | 机电业务调研 |  | 1d | 2025-11-27 | 2025-11-27 | 100% | done |
| 14 | 2.11 | 调研情况整理 |  | 9d | 2025-11-18 | 2025-11-28 | 100% | done |
| 15 | 2.12 | 调研报告输出 | fixed end | 14d | 2025-11-18 | 2025-12-05 | 100% | done |
| 16 | 2.13 | 补充调研 |  | 3d | 2025-12-03 | 2025-12-05 | 100% | done |
| 17 | 3 | **蓝图设计方案输出** |  | 93d | 2025-12-03 | 2026-04-10 | 91% | done |
| 18 | 3.1 | 基础数据1 |  | 3d | 2025-12-03 | 2025-12-05 | 100% | done |
| 19 | 3.2 | 基础数据2 |  | 4d | 2025-12-15 | 2025-12-18 | 100% | done |
| 20 | 3.3 | 销售订单管理 |  | 3d | 2025-12-03 | 2025-12-05 | 100% | done |
| 21 | 3.4 | 计划排产 |  | 2d | 2025-12-08 | 2025-12-09 | 100% | done |
| 22 | 3.5 | 生产执行 |  | 3d | 2025-12-10 | 2025-12-12 | 100% | done |
| 23 | 3.6 | 生产过程记录表 |  | 3d | 2025-12-19 | 2025-12-23 | 100% | done |
| 24 | 3.7 | 品质执行 |  | 3d | 2025-12-15 | 2025-12-17 | 100% | done |
| 25 | 3.8 | 品质过程记录表 |  | 8d | 2025-12-10 | 2025-12-19 | 100% | done |
| 26 | 3.9 | 钢化成品抽检记录 |  | 2d | 2025-12-22 | 2025-12-23 | 100% | done |
| 27 | 3.10 | 生产数据生成 |  | 2d | 2025-12-18 | 2025-12-19 | 100% | done |
| 28 | 3.11 | SAP推送 |  | 2d | 2025-12-19 | 2025-12-22 | 100% | done |
| 29 | 3.12 | 仓库 |  | 1d | 2025-12-23 | 2025-12-23 | 100% | done |
| 30 | 3.13 | 内部整合讨论修改 |  | 6d | 2025-12-24 | 2025-12-31 | 100% | done |

| ID | WBS | Task | Duration | Start | Finish | Complete | Status | inPeople |
| --- | --- | --- | --- | --- | --- | --- | --- | --- |
| 31 | 3.14 | **追加需求设计** | 10d | 2026-03-30 | 2026-04-10 | 67% | done |  |
| 32 | 3.14.1 | 水电气汇报 | 5d | 2026-03-30 | 2026-04-03 | 100% | done |  |
| 33 | 3.14.2 | 新模式品质填报设计 | 10d | 2026-03-30 | 2026-04-10 | 50% | done |  |
| 34 | 4 | **设计方案确认** | 49d | 2026-01-13 | 2026-03-20 | 100% | done |  |
| 35 | 4.1 | **安福业务部门确认** | 3d | 2026-01-13 | 2026-01-15 | 100% | done |  |
| 36 | 4.1.1 | 计划确认 | 1d | 2026-01-13 | 2026-01-13 | 100% | done |  |
| 37 | 4.1.2 | 加工确认 | 1d | 2026-01-13 | 2026-01-13 | 100% | done |  |
| 38 | 4.1.3 | 原料确认 | 1d | 2026-01-14 | 2026-01-14 | 100% | done |  |
| 39 | 4.1.4 | 压延确认 | 1d | 2026-01-14 | 2026-01-14 | 100% | done |  |
| 40 | 4.1.5 | 仓库确认 | 1d | 2026-01-14 | 2026-01-14 | 100% | done |  |
| 41 | 4.1.6 | 收片确认 | 1d | 2026-01-14 | 2026-01-14 | 100% | done |  |
| 42 | 4.1.7 | 品质确认 | 1d | 2026-01-15 | 2026-01-15 | 100% | done |  |
| 43 | 4.2 | 方案优化调整 | 4d | 2026-01-19 | 2026-01-22 | 100% | done |  |
| 44 | 4.3 | 财务需求确认 | 1d | 2026-01-21 | 2026-01-21 | 100% | done |  |
| 45 | 4.4 | 合格证沟通 | 1d | 2026-01-21 | 2026-01-21 | 100% | done |  |
| 46 | 4.5 | 销售图纸文件确认 | 3d | 2026-02-27 | 2026-03-03 | 100% | done |  |
| 47 | 4.6 | 方案业务签字确认 | 3d | 2026-03-18 | 2026-03-20 | 100% | done |  |
| 48 | 5 | 开发方案内部沟通 | 4d | 2026-01-27 | 2026-01-30 | 100% | done |  |
| 49 | 6 | **系统开发** | 84d | 2026-03-03 | 2026-06-26 | 6% |  |  |
| 50 | 6.1 | **建表** | 49d | 2026-03-03 | 2026-05-08 | 75% |  |  |
| 51 | 6.1.1 | 系统建表 | 9d | 2026-03-03 | 2026-03-13 | 100% | done | 伍良近 |
| 52 | 6.1.2 | 品质填报建表 | 3d | 2026-05-06 | 2026-05-08 |  | waiting |  |
| 53 | 6.2 | **开发** | 74d | 2026-03-17 | 2026-06-26 | 2% |  |  |
| 54 | 6.2.1 | 技术架构 | 33d | 2026-03-17 | 2026-04-30 | 15% |  | 伍良近 |
| 55 | 6.2.2 | 基础数据 | 14d | 2026-03-24 | 2026-04-10 |  |  | 李艺琴 |
| 56 | 6.2.3 | 销售订单管理 | 15d | 2026-03-24 | 2026-04-13 |  |  | 张锐瑶 |
| 57 | 6.2.4 | 计划管理 | 15d | 2026-03-24 | 2026-04-13 |  |  | 李阳 |
| 58 | 6.2.5 | 生产管理 | 28d | 2026-03-24 | 2026-04-30 |  |  | 金李斌 |
| 59 | 6.2.6 | 生产填报 | 13d | 2026-05-06 | 2026-05-22 |  |  | 金李斌 |
| 60 | 6.2.7 | 品质管理 | 35d | 2026-03-30 | 2026-05-15 |  |  | 陶宇超 |
| 61 | 6.2.8 | 品质填报 | 1d | 2026-04-13 | 2026-04-13 |  | waiting |  |
| 62 | 6.2.9 | 生产结果 | 15d | 2026-03-24 | 2026-04-13 |  |  | 杨加丰 |
| 63 | 6.2.10 | 推送清单 | 11d | 2026-04-13 | 2026-04-27 |  |  | 杨加丰 |
| 64 | 6.2.11 | 库存管理 | 5d | 2026-04-13 | 2026-04-17 |  |  | 李阳 |
| 65 | 6.2.12 | 开发集成测试 | 20d | 2026-06-01 | 2026-06-26 |  | waiting |  |

| ID | WBS | Task | Type | Duration | Start | Finish | Predecessors | Status |
| --- | --- | --- | --- | --- | --- | --- | --- | --- |
| 66 | 7 | **UAT测试** |  | 25d | 2026-06-29 | 2026-07-31 |  | waiting |
| 67 | 7.1 | 系统管理员培训、问题解答和技术支持 |  | 5d | 2026-06-29 | 2026-07-03 |  | waiting |
| 68 | 7.2 | 单元模块、系统内测 |  | 25d | 2026-06-29 | 2026-07-31 | 49 | waiting |
| 69 | 7.3 | UAT问题跟进处理 |  | 25d | 2026-06-29 | 2026-07-31 |  | waiting |
| 70 | 8 | **培训** |  | 15d | 2026-08-10 | 2026-08-28 |  | waiting |
| 71 | 8.1 | 培训材料编写 |  | 10d | 2026-08-10 | 2026-08-21 |  | waiting |
| 72 | 8.2 | 系统动员会 |  | 1d | 2026-08-21 | 2026-08-21 |  | waiting |
| 73 | 8.3 | 系统培训 |  | 5d | 2026-08-24 | 2026-08-28 | 71 | waiting |
| 74 | 9 | **系统试运行** |  | 50d | 2026-07-20 | 2026-09-25 |  | waiting |
| 75 | 9.1 | 现场设备硬件确认 |  | 5d | 2026-07-20 | 2026-07-24 |  | waiting |
| 76 | 9.2 | 试运行环境搭建 |  | 5d | 2026-07-27 | 2026-07-31 |  | waiting |
| 77 | 9.3 | 试运行数据准备 |  | 5d | 2026-08-24 | 2026-08-28 |  | waiting |
| 78 | 9.4 | 系统试运行 |  | 20d | 2026-08-31 | 2026-09-25 | 73 | waiting |
| 79 | 9.5 | 功能优化 |  | 20d | 2026-08-10 | 2026-09-04 |  | waiting |
| 80 | 10 | **系统上线** |  | 40d | 2026-08-24 | 2026-10-16 |  | waiting |
| 81 | 10.1 | 正式环境部署 |  | 5d | 2026-08-24 | 2026-08-28 |  | waiting |
| 82 | 10.2 | 正式环境数据准备 |  | 5d | 2026-08-31 | 2026-09-04 |  | waiting |
| 83 | 10.3 | 正式上线 | fixed start | 15d | 2026-09-07 | 2026-09-25 |  | waiting |
| 84 | 10.4 | 验收签字 |  | 15d | 2026-09-28 | 2026-10-16 | 83 | waiting |
| 85 | 11 | **南通** |  | 65d | 2026-09-28 | 2026-12-25 |  |  |
| 86 | 11.1 | 南通设备准备 |  | 1d | 2026-09-28 | 2026-09-28 |  |  |
| 87 | 11.2 | 南通上线 |  | 40d | 2026-11-02 | 2026-12-25 |  |  |
| 88 | 12 | 安福三期 |  | 40d | 2027-01-11 | 2027-03-05 |  |  |
| 89 | 13 | 越南 |  | 40d | 2027-03-08 | 2027-04-30 |  |  |
| 90 | 14 | 安福二期 |  | 1d | 2026-11-18 | 2026-11-18 |  |  |
